# VistADataProject

Schedule from MS Project XML, 2016-01-04 to 2016-12-30.

## Calendars

- Standard[Imported][Imported][Imported][Imported]: Mon-Fri 08:00-12:00, 13:00-17:00; Sat-Sun off.

## Resources

| Resource |
| --- |
| Unassigned |
| Caregraf |

## Schedule

| ID | WBS | Task | Duration | Start | Finish | Predecessors | Total slack | Constraint |
| --- | --- | --- | --- | --- | --- | --- | --- | --- |
| 1 | 1 | **A. Infrastructure** | 260d | 2016-01-04 | 2016-12-30 |  |  |  |
| 2 | 1.1 | Artifact Repository [1AA] | 5d | 2016-01-04 | 2016-01-08 |  | 25500d |  |
| 3 | 1.2 | Website [13] | 255d | 2016-01-11 | 2016-12-30 |  |  | start no earlier than 2016-01-11 |
| 4 | 1.3 | FileMan TEST VISTA ["nodeVISTA"] [E3] | 255d | 2016-01-11 | 2016-12-30 |  |  | start no earlier than 2016-01-11 |
| 5 | 1.4 | Document Generators [E4] | 130d | 2016-02-01 | 2016-07-29 |  | 11000d | start no earlier than 2016-02-01 |
| 6 | 2 | **B VDM** | 255d | 2016-01-11 | 2016-12-30 |  |  |  |
| 7 | 2.1 | Machine Processable VISTA Data Model (VDM) "Read Only" (#7.1) | 59d | 2016-01-11 | 2016-03-31 |  |  | start no earlier than 2016-01-11 |
| 8 | 2.2 | Machine Processable VISTA Data Model (VDM) (#7.2) | 196d | 2016-04-01 | 2016-12-30 | 7 |  | start no earlier than 2016-04-01 |
| 9 | 2.3 | Date-stamped FileMan Data Model Implementations (Definitions) (cross refs, triggers ...) (#8) | 124d | 2016-01-11 | 2016-06-30 |  | 13100d | start no earlier than 2016-01-11 |
| 10 | 2.4 | RPC Model (#E1) | 190d | 2016-01-11 | 2016-09-30 |  | 6500d | start no earlier than 2016-01-11 |
| 11 | 2.5 | VDM Package "Read-only" (#E2.1) | 59d | 2016-01-11 | 2016-03-31 |  |  | start no earlier than 2016-01-11 |
| 12 | 2.6 | VDM Package (Full) (#E2.2) | 196d | 2016-04-01 | 2016-12-30 | 11 |  | start no earlier than 2016-01-11 |
| 13 | 2.7 | (Document) Approach to “Live VDM” Maintenance of Current State (#9) | 15d | 2016-11-07 | 2016-11-25 |  | 2500d | start no earlier than 2016-11-07 |
| 14 | 2.8 | Date Stamped (Application) Meta Data for lab, surgery and other applications (#15) | 24d | 2016-05-30 | 2016-06-30 | 11 | 13100d | start no earlier than 2016-05-30 |
| 15 | 2.9 | **PIKS** | 41d | 2016-04-01 | 2016-05-27 | 7 | 15500d |  |
| 16 | 2.9.1 | Machine-processable [PIKS] Annotations (#18) | 41d | 2016-04-01 | 2016-05-27 |  | 15500d | start no earlier than 2016-04-01 |
| 17 | 2.9.2 | Software code [for PIKS] (#19) | 41d | 2016-04-01 | 2016-05-27 |  | 15500d | start no earlier than 2016-04-01 |
| 18 | 2.10 | Prototype query access to VISTA Data against VDM ["FQS"] (#25) | 19d | 2016-06-06 | 2016-06-30 | 11 | 13100d | start no earlier than 2016-06-06 |
| 19 | 2.11 | Prototype Web-Based Query Interface to FileMan [VDM] Data (#33) | 131d | 2016-04-01 | 2016-09-30 | 11 | 6500d | start no earlier than 2016-04-01 |
| 20 | 3 | **C. MVDM** | 255d | 2016-01-11 | 2016-12-30 |  |  |  |
| 21 | 3.1 | Master VISTA Data Model (MVDM) "Read-only" (#10.1) | 59d | 2016-01-11 | 2016-03-31 |  | 100d | start no earlier than 2016-01-11 |
| 22 | 3.2 | Master VISTA Data Model (MVDM) (#10.2) | 195d | 2016-04-04 | 2016-12-30 | 21 |  | start no earlier than 2016-04-04 |
| 23 | 3.3 | [MVDM over VDM] Heuristic (mapping) code "Read-only" [MVDM Module] (#11.1) | 64d | 2016-04-04 | 2016-06-30 |  |  | start no earlier than 2016-04-04 |
| 24 | 3.4 | [MVDM over VDM] Heuristic (mapping) code [MVDM Module] (#11.2) | 131d | 2016-07-01 | 2016-12-30 | 23 |  | start no earlier than 2016-04-04 |
| 25 | 3.5 | [MVDM] Normalization Reports (#12) | 65d | 2016-10-03 | 2016-12-30 |  |  | start no earlier than 2016-10-03 |
| 26 | 3.6 | Report on [MVDM] Exposure of older models (#14) | 20d | 2016-12-05 | 2016-12-30 |  |  | start no earlier than 2016-12-05 |
| 27 | 3.7 | Prototype Patient-centric Data Security (#28) | 129d | 2016-07-05 | 2016-12-30 |  |  | start no earlier than 2016-07-05 |
| 28 | 3.8 | VISTA Application model(s)/Prototype(s) [Tests] (#35) | 195d | 2016-04-04 | 2016-12-30 |  |  | start no earlier than 2016-04-04 |
| 29 | 3.9 | Meta-model(s) [VPR] Prototype(s) [#36] | 130d | 2016-04-04 | 2016-09-30 |  | 6500d | start no earlier than 2016-04-04 |

Notes:
- 7: vdm.jsonld, the native VISTA data model in JSON-LD based on one or more dd.jsonld's. VDM Maker, a program that creates vdm.jsonld from dd.jsonld's. This version will support query/read ("VDM (read)").

| ID | WBS | Task | Duration | Start | Finish | Total slack | Constraint |
| --- | --- | --- | --- | --- | --- | --- | --- |
| 30 | 4 | **D. MVDMmap** | 129d? | 2016-07-05 | 2016-12-30 |  |  |
| 31 | 4.1 | Prototype Web-based Rules Hub [#32] | 64d | 2016-07-05 | 2016-09-30 | 6500d | start no earlier than 2016-07-05 |
| 32 | 4.2 | Reference model(s)/Prototype(s) [#39] | 129d? | 2016-07-05 | 2016-12-30 |  | start no earlier than 2016-07-05 |
| 33 | 4.3 | Document VISTA-ese vs. FHIR [#40] | 129d | 2016-07-05 | 2016-12-30 |  | start no earlier than 2016-07-05 |
